# Projet Web

Schedule from MS Project, 2018-04-09 to 2018-04-19, 7 hours a day, A marks actual dates.

## Calendars

- Standard: Mon-Wed 08:30-12:30, 13:30-17:30; Thu 08:30-12:30; Fri 08:30-12:30, 13:30-17:30; Sat-Sun off.

## Resources

| Resource |
| --- |
| Nicolas |
| Pierre |
| Hugo |
| 3 |

## Schedule

| ID | WBS | Task | Type | Duration | Start | Finish | Predecessors | Complete | Remaining | Total slack | Free slack | Constraint | Resources | Work | Actual work |
| --- | --- | --- | --- | --- | --- | --- | --- | --- | --- | --- | --- | --- | --- | --- | --- |
| 1 | 1 | **gestion de projet** |  | 3.57d | 2018-04-09 09:00 A | 2018-04-12 10:00 A |  | 100% |  |  |  |  |  | 22h | 22h |
| 2 | 1.1 | PBS |  | 1h | 2018-04-09 09:00 A | 2018-04-09 10:00 A |  | 100% |  |  |  | must start on 2018-04-09 09:00 | Nicolas [90%]; Pierre [90%]; Hugo [90%] | 2.7h | 2.7h |
| 3 | 1.2 | WBS |  | 2h | 2018-04-09 10:00 A | 2018-04-09 12:00 A | 2 | 100% |  |  |  |  | Nicolas [90%]; Pierre [90%]; Hugo [90%] | 5.4h | 5.4h |
| 4 | 1.3 | OBS |  | 3h | 2018-04-09 12:00 A | 2018-04-10 17:00 A | 3 | 100% |  |  |  |  | Pierre [90%]; Hugo [90%]; Nicolas [90%] | 2.7h | 2.7h |
| 5 | 1.4 | MS Project |  | 5h | 2018-04-09 12:00 A | 2018-04-10 16:00 A | 3 | 100% |  |  |  |  | Nicolas | 5h | 5h |
| 6 | 1.5 | PERT |  | 2h | 2018-04-10 17:00 A | 2018-04-11 10:00 A | 4 | 100% |  |  |  |  | Pierre | 2h | 2h |
| 7 | 1.6 | GANTT | milestone | 0h | 2018-04-10 16:00 A | 2018-04-10 16:00 A | 5 | 100% |  |  |  |  | Nicolas |  |  |
| 8 | 1.7 | Dossier de conception |  | 3.57d | 2018-04-09 09:00 A | 2018-04-12 10:00 A | 2SS, 9 | 100% |  |  |  |  | Pierre [10%]; Hugo [10%]; Nicolas [10%] | 4.2h | 4.2h |
| 9 | 2 | **BDD** |  | 2.64d | 2018-04-10 16:00 A | 2018-04-13 14:30 | 7 | 71% | 0.78d | -0.93d | 0d |  |  | 15.3h | 10.8h |
| 10 | 2.1 | MCD |  | 2h | 2018-04-10 16:00 A | 2018-04-11 09:00 A |  | 100% |  |  |  |  | Nicolas [90%] | 1.8h | 1.8h |
| 11 | 2.2 | MPD |  | 1h | 2018-04-11 16:00 A | 2018-04-11 17:00 A | 10 | 100% |  |  |  |  | Nicolas [90%] | 0.9h | 0.9h |
| 12 | 2.3 | MLD |  | 2h | 2018-04-11 17:00 A | 2018-04-12 10:00 A | 11 | 100% |  |  |  |  | Nicolas [90%] | 1.8h | 1.8h |
| 13 | 2.4 | Jeu de donnée |  | 1h | 2018-04-12 10:00 A | 2018-04-12 11:00 A | 12 | 100% |  |  |  |  | Nicolas [90%] | 0.9h | 0.9h |
| 14 | 2.5 | Création des entitées |  | 3h | 2018-04-11 09:00 A | 2018-04-11 12:00 A | 10 | 100% |  |  |  |  | Nicolas [90%] | 2.7h | 2.7h |
| 15 | 2.6 | dépendances entre entitées |  | 3h | 2018-04-11 12:00 A | 2018-04-11 16:00 A | 14 | 100% |  |  |  |  | Nicolas [90%] | 2.7h | 2.7h |
| 16 | 2.7 | fonction de manipulatuon de données |  | 5h | 2018-04-13 08:30 | 2018-04-13 14:30 | 15 |  |  | -2.36d | 0d |  | Nicolas [90%] | 4.5h |  |
| 17 | 3 | **site** |  | 8.21d | 2018-04-09 12:00 A | 2018-04-19 09:30 |  | 39% | 4.97d | 0d |  |  |  | 74.4h | 32.15h |
| 18 | 3.1 | **front end** |  | 4d | 2018-04-09 12:00 A | 2018-04-13 12:00 |  | 82% | 0.74d | 4.21d |  |  |  | 22.4h | 18.15h |
| 19 | 3.1.1 | **modé** |  | 1d | 2018-04-09 12:00 A | 2018-04-10 11:00 A | 3 | 100% |  |  |  |  |  | 5.4h | 5.4h |
| 20 | 3.1.1.1 | inscription/connexion |  | 1h | 2018-04-09 12:00 A | 2018-04-09 14:00 A |  | 100% |  |  |  |  | Hugo [90%] | 0.9h | 0.9h |
| 21 | 3.1.1.2 | boutique |  | 1h | 2018-04-09 14:00 A | 2018-04-09 15:00 A |  | 100% |  |  |  |  | Hugo [90%] | 0.9h | 0.9h |
| 22 | 3.1.1.3 | pannier |  | 1h | 2018-04-09 15:00 A | 2018-04-09 16:00 A |  | 100% |  |  |  |  | Hugo [90%] | 0.9h | 0.9h |
| 23 | 3.1.1.4 | home |  | 1h | 2018-04-09 16:00 A | 2018-04-09 17:00 A |  | 100% |  |  |  |  | Hugo [90%] | 0.9h | 0.9h |
| 24 | 3.1.1.5 | events |  | 1h | 2018-04-10 09:00 A | 2018-04-10 10:00 A |  | 100% |  |  |  |  | Hugo [90%] | 0.9h | 0.9h |
| 25 | 3.1.1.6 | boîte à idée |  | 1h | 2018-04-10 10:00 A | 2018-04-10 11:00 A |  | 100% |  |  |  |  | Hugo [90%] | 0.9h | 0.9h |

| ID | WBS | Task | Duration | Start | Finish | Predecessors | Complete | Remaining | Total slack | Free slack | Resources | Work | Actual work |
| --- | --- | --- | --- | --- | --- | --- | --- | --- | --- | --- | --- | --- | --- |
| 26 | 3.1.2 | **réal** | 3d | 2018-04-10 11:00 A | 2018-04-13 12:00 | 19 | 75% | 0.75d | 4.21d |  |  | 17h | 12.75h |
| 27 | 3.1.2.1 | inscription/connexion | 2h | 2018-04-11 17:00 A | 2018-04-12 10:00 A |  | 100% |  |  |  | Hugo | 2h | 2h |
| 28 | 3.1.2.2 | boutique | 5h | 2018-04-10 11:00 A | 2018-04-12 10:30 A |  | 100% |  |  |  | Hugo | 5h | 5h |
| 29 | 3.1.2.3 | pannier | 3h | 2018-04-11 14:00 A | 2018-04-11 17:00 A |  | 100% |  |  |  | Hugo | 3h | 3h |
| 30 | 3.1.2.4 | home | 2h | 2018-04-11 17:00 A | 2018-04-12 12:00 |  | 88% | 0.25h | 4.79d |  | Hugo | 2h | 1.75h |
| 31 | 3.1.2.5 | events | 2h | 2018-04-11 17:00 A | 2018-04-13 09:30 |  | 25% | 1.5h | 4.57d |  | Hugo | 2h | 0.5h |
| 32 | 3.1.2.6 | boîte à idée | 3h | 2018-04-11 17:00 A | 2018-04-13 12:00 |  | 17% | 2.5h | 4.21d |  | Hugo | 3h | 0.5h |
| 33 | 3.2 | **back end** | 6.64d | 2018-04-10 16:00 A | 2018-04-19 09:30 |  | 23% | 5.09d | 0d |  |  | 52h | 14h |
| 34 | 3.2.1 | **interface de connexion** | 0.29d | 2018-04-17 13:30 A | 2018-04-17 15:30 A | 9 | 100% |  |  |  |  | 2h | 2h |
| 35 | 3.2.1.1 | check le nom d'utilisatur dans la BDD | 1h | 2018-04-17 13:30 A | 2018-04-17 14:30 A |  | 100% |  |  |  | Pierre | 1h | 1h |
| 36 | 3.2.1.2 | check le hash du MDP dans la BDD | 1h | 2018-04-17 14:30 A | 2018-04-17 15:30 A |  | 100% |  |  |  | Pierre | 1h | 1h |
| 37 | 3.2.2 | **interface d'inscription** | 3d | 2018-04-13 14:30 A | 2018-04-18 10:30 | 9 | 75% | 0.75d | 1d |  |  | 4h | 3h |
| 38 | 3.2.2.1 | regex mdp | 1h | 2018-04-17 15:30 A | 2018-04-17 16:30 A |  | 100% |  |  |  | Pierre | 1h | 1h |
| 39 | 3.2.2.2 | check le nom d'utilisatur dans la BDD | 1h | 2018-04-17 16:30 A | 2018-04-17 17:30 A |  | 100% |  |  |  | Pierre | 1h | 1h |
| 40 | 3.2.2.3 | sauvegarder le hash du mdp dans la BDD | 1h | 2018-04-13 14:30 | 2018-04-13 15:30 |  |  |  | 3.86d |  | Pierre | 1h |  |
| 41 | 3.2.2.4 | savegarder le nom d'utilisateur et autres info dans la BDD | 1h | 2018-04-18 09:30 A | 2018-04-18 10:30 A |  | 100% |  |  |  | Pierre | 1h | 1h |
| 42 | 3.2.3 | **privilèges** | 3d | 2018-04-16 09:30 | 2018-04-18 15:30 |  |  |  | 0.43d |  |  | 4h |  |
| 43 | 3.2.3.1 | **BDE** | 0.14d | 2018-04-16 09:30 | 2018-04-16 10:30 |  |  |  | 3.14d |  |  | 1h |  |
| 44 | 3.2.3.1.1 | **Valider une idée** | 0.14d | 2018-04-16 09:30 | 2018-04-16 10:30 |  |  |  | 3.14d |  |  | 1h |  |
| 45 | 3.2.3.1.1.1 | réutiliser la fonction d'ajout | 1h | 2018-04-16 09:30 | 2018-04-16 10:30 | 77 |  |  | 3.14d | 0d | Pierre | 1h |  |
| 46 | 3.2.3.2 | **Salarié** | 0.43d | 2018-04-18 11:30 | 2018-04-18 15:30 | 72SS |  |  | 0.43d |  |  | 3h |  |
| 47 | 3.2.3.2.1 | **signaler** | 0.43d | 2018-04-18 11:30 | 2018-04-18 15:30 |  |  |  | 0.43d |  |  | 3h |  |
| 48 | 3.2.3.2.1.1 | image | 1h | 2018-04-18 11:30 | 2018-04-18 12:30 |  |  |  | 0.71d |  | Pierre | 1h |  |
| 49 | 3.2.3.2.1.2 | commentaire | 1h | 2018-04-18 13:30 | 2018-04-18 14:30 |  |  |  | 0.57d |  | Pierre | 1h |  |
| 50 | 3.2.3.2.1.3 | event | 1h | 2018-04-18 14:30 | 2018-04-18 15:30 |  |  |  | 0.43d |  | Pierre | 1h |  |

| ID | WBS | Task | Duration | Start | Finish | Predecessors | Complete | Remaining | Total slack | Free slack | Resources | Work | Actual work |
| --- | --- | --- | --- | --- | --- | --- | --- | --- | --- | --- | --- | --- | --- |
| 51 | 3.2.4 | **boite à idée** | 3.5d | 2018-04-10 16:00 | 2018-04-16 11:30 |  |  |  | 3.14d |  |  | 4h |  |
| 52 | 3.2.4.1 | **étudiant** | 0.29d | 2018-04-10 16:00 | 2018-04-11 09:00 |  |  |  | 6.07d |  |  | 2h |  |
| 53 | 3.2.4.1.1 | proposer une idée | 2h | 2018-04-10 16:00 | 2018-04-11 09:00 | 7 |  |  | 6.07d | 2.93d | Hugo | 2h |  |
| 54 | 3.2.4.2 | **BDE** | 0.29d | 2018-04-16 09:30 | 2018-04-16 11:30 |  |  |  | 3.14d |  |  | 2h |  |
| 55 | 3.2.4.2.1 | valider une idée | 2h | 2018-04-16 09:30 | 2018-04-16 11:30 | 45SS, 53 |  |  | 3.14d |  | Hugo | 2h |  |
| 56 | 3.2.5 | **boutique** | 4.5d | 2018-04-10 16:00 A | 2018-04-17 10:30 |  | 50% | 2.25d | 2.14d |  |  | 18h | 9h |
| 57 | 3.2.5.1 | **étudiant** | 4.36d | 2018-04-10 16:00 A | 2018-04-17 09:30 |  | 31% | 3.02d | 2.29d |  |  | 13h | 4h |
| 58 | 3.2.5.1.1 | **commander** | 1.29d | 2018-04-16 08:30 A | 2018-04-17 09:30 | 9 | 40% | 0.77d | 2.29d |  |  | 5h | 2h |
| 59 | 3.2.5.1.1.1 | ajouter au panier | 2h | 2018-04-16 08:30 A | 2018-04-16 10:30 A |  | 100% |  |  |  | Nicolas | 2h | 2h |
| 60 | 3.2.5.1.1.2 | notifier le BDE | 1h | 2018-04-17 08:30 | 2018-04-17 09:30 |  |  |  | 2.29d |  | Nicolas | 1h |  |
| 61 | 3.2.5.1.1.3 | auto save le pannier | 2h | 2018-04-16 10:30 | 2018-04-16 12:30 |  |  |  | 3d |  | Nicolas | 2h |  |
| 62 | 3.2.5.1.2 | **interface** | 1.29d | 2018-04-13 14:30 A | 2018-04-16 15:30 |  | 40% | 0.77d | 2.71d |  |  | 5h | 2h |
| 63 | 3.2.5.1.2.1 | 3 best sellers | 2h | 2018-04-16 13:30 A | 2018-04-16 15:30 A | 9 | 100% |  |  |  | Nicolas | 2h | 2h |
| 64 | 3.2.5.1.2.2 | menu de recherche | 3h | 2018-04-13 14:30 | 2018-04-13 17:30 | 9 |  |  | 3.57d |  | Nicolas | 3h |  |
| 65 | 3.2.5.1.3 | paypal optionnel | 3h | 2018-04-10 16:00 | 2018-04-12 12:30 |  |  |  | 4.71d |  | Nicolas | 3h |  |
| 66 | 3.2.5.2 | **BDE** | 0.57d | 2018-04-16 15:30 A | 2018-04-17 10:30 A | 9 | 100% |  |  |  |  | 5h | 5h |
| 67 | 3.2.5.2.1 | ajouter article | 2h | 2018-04-16 15:30 A | 2018-04-16 17:30 A | 9 | 100% |  |  |  | Nicolas | 2h | 2h |
| 68 | 3.2.5.2.2 | modif article (optionnel) | 2h | 2018-04-17 08:30 A | 2018-04-17 10:30 A | 9 | 100% |  |  |  | Nicolas | 2h | 2h |
| 69 | 3.2.5.2.3 | suppr article | 1h | 2018-04-17 08:30 A | 2018-04-17 09:30 A | 9 | 100% |  |  |  | Nicolas | 1h | 1h |
| 70 | 3.2.6 | **fil d'actu** | 6.36d | 2018-04-11 09:00 | 2018-04-19 09:30 | 9 |  |  | 0d |  |  | 20h |  |
| 71 | 3.2.6.1 | **Salarié** | 0.86d | 2018-04-18 10:30 | 2018-04-18 17:30 | 9 |  |  | 0.14d |  |  | 3h |  |
| 72 | 3.2.6.1.1 | **Report** | 0.86d | 2018-04-18 10:30 | 2018-04-18 17:30 |  |  |  | 0.14d |  |  | 3h |  |
| 73 | 3.2.6.1.1.1 | photo | 1h | 2018-04-18 10:30 | 2018-04-18 11:30 |  |  |  | 0.86d |  | Pierre | 1h |  |
| 74 | 3.2.6.1.1.2 | event | 1h | 2018-04-18 15:30 | 2018-04-18 16:30 |  |  |  | 0.29d |  | Pierre | 1h |  |
| 75 | 3.2.6.1.1.3 | commentaire | 1h | 2018-04-18 16:30 | 2018-04-18 17:30 |  |  |  | 0.14d |  | Pierre | 1h |  |

| ID | WBS | Task | Type | Duration | Start | Finish | Predecessors | Total slack | Free slack | Resources | Work |
| --- | --- | --- | --- | --- | --- | --- | --- | --- | --- | --- | --- |
| 76 | 3.2.6.2 | **BDE** |  | 4d | 2018-04-13 14:30 | 2018-04-19 09:30 | 9 | 0d |  |  | 8h |
| 77 | 3.2.6.2.1 | **ajouter un event** |  | 0.57d | 2018-04-13 14:30 | 2018-04-16 09:30 |  | 3.14d | 0d |  | 4h |
| 78 | 3.2.6.2.1.1 | description |  | 1h | 2018-04-13 14:30 | 2018-04-13 15:30 |  | 3.57d |  | Pierre | 1h |
| 79 | 3.2.6.2.1.2 | image |  | 1h | 2018-04-13 15:30 | 2018-04-13 16:30 |  | 3.43d |  | Pierre | 1h |
| 80 | 3.2.6.2.1.3 | date |  | 1h | 2018-04-13 16:30 | 2018-04-13 17:30 |  | 3.29d |  | Pierre | 1h |
| 81 | 3.2.6.2.1.4 | flag ponctuel/récurrent et payant/gratuit |  | 1h | 2018-04-16 08:30 | 2018-04-16 09:30 |  | 3.14d |  | Pierre | 1h |
| 82 | 3.2.6.2.2 | **admin les events passés** |  | 0.14d | 2018-04-19 08:30 | 2018-04-19 09:30 |  | 0d |  |  | 2h |
| 83 | 3.2.6.2.2.1 | photos |  | 1h | 2018-04-19 08:30 | 2018-04-19 09:30 |  | 0d |  | Pierre | 1h |
| 84 | 3.2.6.2.2.2 | commentaires |  | 1h | 2018-04-19 08:30 | 2018-04-19 09:30 |  | 0d |  | Pierre | 1h |
| 85 | 3.2.6.2.3 | dl les inscrits sur un évenement |  | 2h | 2018-04-16 10:30 | 2018-04-16 12:30 |  | 3d |  | Pierre | 2h |
| 86 | 3.2.6.3 | **étudiant** |  | 6.36d | 2018-04-11 09:00 | 2018-04-19 09:30 | 9 | 0d |  |  | 9h |
| 87 | 3.2.6.3.1 | voir les activités |  | 2h | 2018-04-16 13:30 | 2018-04-16 15:30 |  | 2.71d |  | Pierre | 2h |
| 88 | 3.2.6.3.2 | s'inscrire |  | 2h | 2018-04-16 15:30 | 2018-04-16 17:30 |  | 2.43d |  | Pierre | 2h |
| 89 | 3.2.6.3.3 | poster des photos |  | 2h | 2018-04-17 08:30 | 2018-04-17 10:30 |  | 2.14d |  | Pierre | 2h |
| 90 | 3.2.6.3.4 | like |  | 1h | 2018-04-19 08:30 | 2018-04-19 09:30 |  | 0d |  | Pierre | 1h |
| 91 | 3.2.6.3.5 | commenter |  | 2h | 2018-04-17 10:30 | 2018-04-17 12:30 |  | 1.86d |  | Pierre | 2h |
| 92 | 3.2.6.3.6 | cours github | manual | 1h | 2018-04-11 09:00 | 2018-04-11 10:00 |  |  |  |  |  |
| 93 | 3.2.6.3.7 | liaison back-end front-end | manual | 1d? | 2018-04-11 09:00 | 2018-04-11 17:00 |  |  |  |  |  |
